# Scientific_Calculator

Schedule from MS Project, 2018-05-08 to 2018-06-06, 7 hours a day, A marks actual dates.
Planification de la réalisation d'une calculatrice scientifique
CPNV

## Calendars

- Standard: Mon 09:50-12:05, 13:30-15:00, 15:15-16:05; Tue 08:00-09:30, 09:50-12:10, 13:30-15:00, 15:20-16:50; Wed 08:00-09:30, 09:50-12:05, 13:30-15:00, 15:20-16:05; Thu 09:50-12:05, 13:30-15:00, 15:20-16:50; Fri-Sun off. Exceptions (off unless hours are given): 2018-05-10 to 2018-05-11 (Pont de l'Ascension), 2018-05-21 (lundi de Pentecôte).

## Schedule

| ID | WBS | Task | Type | Duration | Start | Finish | Predecessors | Complete | Remaining | Total slack | Free slack | Work | Actual work |
| --- | --- | --- | --- | --- | --- | --- | --- | --- | --- | --- | --- | --- | --- |
| 1 | 1 | **Totalité du projet** |  | 12.86d? | 2018-05-08 09:00 A | 2018-06-06 11:40 |  | 11% | 11.48d? | 0d |  | 179.5h | 20.75h |
| 2 | 1.1 | Rédaction de la Planification initiale |  | 2h | 2018-05-08 09:00 A | 2018-05-08 11:20 A |  | 100% |  |  |  | 2h | 2h |
| 3 | 1.2 | **Analyse** |  | 1.96d | 2018-05-08 11:20 A | 2018-05-14 15:25 |  | 88% | 0.24d | 10.61d |  | 14.75h | 13.25h |
| 4 | 1.2.1 | Création des Use Cases |  | 2h | 2018-05-08 11:20 A | 2018-05-08 14:40 A | 2 | 100% |  |  |  | 2h | 2h |
| 5 | 1.2.2 | Création des maquettes et de l'interface graphique essentielle |  | 4.5h | 2018-05-08 14:40 A | 2018-05-09 11:00 | 4 | 85% | 0.65h | 0.5d | 0d | 5h | 4.5h |
| 6 | 1.2.3 | Création des scénarii |  | 5h | 2018-05-09 10:30 A | 2018-05-14 11:00 | 5 | 80% | 1h | 11d |  | 6h | 5h |
| 7 | 1.2.4 | Création du Modèle Conceptuel de Données |  | 1h | 2018-05-14 10:00 A | 2018-05-14 11:00 A | 6 | 100% |  |  |  | 1h | 1h |
| 8 | 1.2.5 | Création de Modèle Logique de Données |  | 0.75h | 2018-05-14 14:25 A | 2018-05-14 15:25 A | 7 | 100% |  |  |  | 0.75h | 0.75h |
| 9 | 1.3 | Documentation de l'analyse |  | 4.75h | 2018-05-15 08:35 A | 2018-05-15 15:00 | 8 | 95% | 0.25h | 0.18d | 0d | 4.75h | 4.5h |
| 10 | 1.4 | **Implémentation & tests** |  | 8.32d | 2018-05-15 15:00 A | 2018-06-05 08:10 |  | 2% | 8.18d | 0d |  | 58h | 1h |
| 11 | 1.4.1 | Implémentation des classes et des méthodes vides | milestone | 0h | 2018-05-15 15:00 | 2018-05-15 15:00 | 9 |  |  | 0.18d | 0d |  |  |
| 12 | 1.4.2 | Finalisation de l'interface graphique |  | 3h | 2018-05-15 15:20 | 2018-05-16 09:30 | 11, 9 |  |  | 0.18d | 0d | 3h |  |
| 13 | 1.4.3 | Implémentation de la base de données |  | 2h | 2018-05-16 09:50 | 2018-05-16 11:50 | 12 |  |  | 0.18d | 0.04d | 2h |  |
| 14 | 1.4.4 | Implémentation de la classe de calcul avec des calculs simples |  | 4h | 2018-05-16 13:30 A | 2018-05-17 11:35 | 13 | 25% | 3h | 0d |  | 4h | 1h |
| 15 | 1.4.5 | Tests de la classe de calcul |  | 2h | 2018-05-17 11:35 | 2018-05-17 15:00 | 14 |  |  | 0d |  | 2h |  |
| 16 | 1.4.6 | Implémentation du système d'entrée utilisateur |  | 6h | 2018-05-17 15:20 | 2018-05-22 14:10 | 15 |  |  | 0d |  | 6h |  |
| 17 | 1.4.7 | Tests du système d'entrés utilisateur |  | 3h | 2018-05-22 14:10 | 2018-05-23 08:40 | 16 |  |  | 0d |  | 3h |  |
| 18 | 1.4.8 | Implémentation des calculs avancés |  | 4h | 2018-05-23 08:40 | 2018-05-23 14:25 | 17 |  |  | 0d |  | 4h |  |
| 19 | 1.4.9 | Tests des calculs avancés |  | 2h | 2018-05-23 14:25 | 2018-05-24 10:30 | 18 |  |  | 0d |  | 2h |  |
| 20 | 1.4.10 | Implémentation de l'historique des opérations |  | 4h | 2018-05-24 10:30 | 2018-05-24 16:15 | 19 |  |  | 0d |  | 5h |  |
| 21 | 1.4.11 | Tests de l'historique des opérations |  | 2h | 2018-05-24 16:15 | 2018-05-28 11:15 | 20 |  |  | 0d |  | 2h |  |
| 22 | 1.4.12 | Implémentation de l'utilisation des constantes |  | 5h | 2018-05-28 11:15 | 2018-05-29 10:10 | 21 |  |  | 0d |  | 5h |  |
| 23 | 1.4.13 | Tests de l'utilisation des constantes |  | 1h | 2018-05-29 10:10 | 2018-05-29 11:10 | 22 |  |  | 0d |  | 1h |  |
| 24 | 1.4.14 | Implémentation de la conversion de base numérique |  | 3h | 2018-05-29 11:10 | 2018-05-29 15:50 | 23 |  |  | 0d |  | 3h |  |
| 25 | 1.4.15 | Tests de la conversion de base numérique |  | 1h | 2018-05-29 15:50 | 2018-05-29 16:50 | 24 |  |  | 0d |  | 1h |  |
| 26 | 1.4.16 | Implémentation de l'affichage d'un graphe |  | 6h | 2018-05-30 08:00 | 2018-05-30 16:05 | 25 |  |  | 0d |  | 7h |  |
| 27 | 1.4.17 | Tests de l'affichage de graphe |  | 2h | 2018-05-31 09:50 | 2018-05-31 11:50 | 26 |  |  | 0d |  | 2h |  |
| 28 | 1.4.18 | Implémentation de la modification des paramètres |  | 4h | 2018-05-31 11:50 | 2018-06-04 10:35 | 27 |  |  | 0d |  | 4h |  |
| 29 | 1.4.19 | Tests de la modification des paramètres |  | 1h | 2018-06-04 10:35 | 2018-06-04 11:35 | 28 |  |  | 0d |  | 1h |  |
| 30 | 1.4.20 | Modifications selon les tests client |  | 3h | 2018-06-04 11:35 | 2018-06-05 08:10 | 29 |  |  | 0d |  | 1h |  |
| 31 | 1.5 | Documentation de la réalisation |  | 5h | 2018-06-05 08:10 | 2018-06-05 14:50 | 30 |  |  | 0d |  | 5h |  |
| 32 | 1.6 | Documentation finale |  | 5h | 2018-06-05 14:50 | 2018-06-06 11:40 | 31 |  |  | 0d |  | 5h |  |
| 33 | 1.7 | Documentation continue | manual | 90h | 2018-05-08 09:00 A | 2018-06-06 11:40 |  |  | 90h |  |  | 90h |  |
